# Proyecto Evaluaciones

Schedule from MS Project, 2020-04-02 to 2020-05-08.

## Calendars

- Estándar: Mon-Fri 09:00-13:00, 15:00-19:00; Sat-Sun off. Exceptions (off unless hours are given): 2020-04-10 to 2020-04-12 (Semana Santa).

## Resources

| Resource | Group |
| --- | --- |
| Marco Quezada | M.I.S |
| Daniel Fuentes | M.I.S |
| Victor Araya | M.I.S |
| Nayareth Toro | Cobranza |
| Valentina Lizana | Cobranza |
| Evaluadoras | Cobranza |

## Schedule

| ID | Task | Type | Duration | Start | Finish | Predecessors | Resources | Work |
| --- | --- | --- | --- | --- | --- | --- | --- | --- |
| 1 | Levantamiento de Requerimientos | manual | 2d | 2020-04-02 | 2020-04-03 |  | Marco Quezada [50%]; Nayareth Toro; Valentina Lizana; Victor Araya [50%] | 48h |
| 2 | Diseño Workflow Facade | manual | 2d | 2020-04-02 | 2020-04-03 |  | Daniel Fuentes [50%]; Marco Quezada [50%]; Valentina Lizana; Victor Araya [50%] | 40h |
| 3 | Clases de Configuración Global del Módulo | manual | 2d | 2020-04-06 | 2020-04-07 | 1 | Victor Araya [50%] | 8h |
| 4 | Generar Clases de Entidad | manual | 2d | 2020-04-06 | 2020-04-07 | 1 | Daniel Fuentes [50%] | 8h |
| 5 | Generar Controlador de Control | manual | 3d | 2020-04-06 | 2020-04-08 | 1 | Victor Araya [50%] | 12h |
| 6 | Diseño de Facade Create/Read | manual | 4d | 2020-04-08 | 2020-04-14 | 2 | Marco Quezada [50%]; Victor Araya [50%] | 32h |
| 7 | Core Evaluación Create/Read | manual | 4d | 2020-04-09 | 2020-04-15 | 3, 2, 4, 5 | Daniel Fuentes [50%]; Victor Araya [50%] | 32h |
| 8 | Creación de Transacciones Create/Read | manual | 4d | 2020-04-09 | 2020-04-15 | 3, 2, 4, 5 | Daniel Fuentes [50%]; Marco Quezada [50%] | 32h |
| 9 | Testing de Usuarios Clave | manual | 1d | 2020-04-16 | 2020-04-16 | 6, 7, 8 | Marco Quezada [50%]; Nayareth Toro; Valentina Lizana | 20h |
| 10 | Correcciones y Mejoras Varias | manual | 1d | 2020-04-17 | 2020-04-17 | 9 | Daniel Fuentes [50%]; Marco Quezada [50%]; Victor Araya [50%] | 12h |
| 11 | Diseño Facade Update/Delete | manual | 3d | 2020-04-20 | 2020-04-22 | 10 | Daniel Fuentes [50%]; Victor Araya [50%] | 24h |
| 12 | Core Evaluacion Update/Delete | manual | 2d | 2020-04-20 | 2020-04-21 | 10 | Daniel Fuentes [50%]; Marco Quezada [50%]; Victor Araya [50%] | 24h |
| 13 | Transaccion Update/Delete | manual | 3d | 2020-04-20 | 2020-04-22 | 10 | Daniel Fuentes [50%]; Victor Araya [50%] | 24h |
| 14 | Testing de Usuarios Clave | manual | 1d | 2020-04-23 | 2020-04-23 | 11, 12, 13 | Marco Quezada [50%]; Nayareth Toro; Valentina Lizana | 20h |
| 15 | Correcciones y Mejoras Varias | manual | 1d | 2020-04-24 | 2020-04-24 | 14 | Daniel Fuentes [50%]; Marco Quezada [50%]; Victor Araya [50%] | 12h |
| 16 | Transaccion de Reportería | manual | 3d | 2020-04-27 | 2020-04-29 | 15 | Daniel Fuentes [50%]; Victor Araya [50%] | 24h |
| 17 | Core Reportería | manual | 3d | 2020-04-27 | 2020-04-29 | 15 | Daniel Fuentes [50%]; Victor Araya [50%] | 24h |
| 18 | Fachada Reportería | manual | 3d | 2020-04-27 | 2020-04-29 | 15 | Daniel Fuentes [50%]; Marco Quezada [50%] | 24h |
| 19 | Testing de Reportería | manual | 1d | 2020-04-30 | 2020-04-30 | 16, 17, 18 | Marco Quezada [50%]; Nayareth Toro; Valentina Lizana | 20h |
| 20 | Correcciones y Mejoras Varias | manual | 1d | 2020-05-01 | 2020-05-01 | 19 | Daniel Fuentes [50%]; Marco Quezada [50%]; Victor Araya [50%] | 12h |
| 21 | Marcha Blanca | manual | 4d | 2020-05-04 | 2020-05-07 | 20 | Evaluadoras; Nayareth Toro; Valentina Lizana | 96h |
| 22 | Correcciones | manual | 4d | 2020-05-04 | 2020-05-07 | 20 | Daniel Fuentes [50%]; Marco Quezada [50%]; Victor Araya [50%] | 48h |
| 23 | Produccion | milestone, manual | 0d | 2020-05-08 | 2020-05-08 | 21, 22 | Evaluadoras; Nayareth Toro; Valentina Lizana |  |
